# TT-Cronograma v05 (ACTUAL)

How a schedule from MS Project changed from version to version. A marks actual dates.

## Version 1 (saved 2020-05-26, file TT-Cronograma v05 (ACTUAL).mpp)

| ID | WBS | Task | Duration | Start | Finish | Predecessors | Complete | Total float | Constraint |
| --- | --- | --- | --- | --- | --- | --- | --- | --- | --- |
| 1 | 1 | **Junta de status** | 184d | 2020-02-11 A | 2020-12-30 |  | 35% |  |  |
| 2 |  | Junta de status | 1d | 2020-02-11 A | 2020-02-11 A |  | 100% |  | start no earlier than 2020-02-11 |
| 3 |  | Junta de status | 1d | 2020-02-18 A | 2020-02-18 A |  | 100% |  | start no earlier than 2020-02-18 |
| 4 |  | Junta de status | 1d | 2020-03-04 A | 2020-03-04 A |  | 100% |  | start no earlier than 2020-03-04 |
| 5 |  | Junta de status | 1d | 2020-03-11 A | 2020-03-11 A |  | 100% |  | start no earlier than 2020-03-11 |
| 6 |  | Junta de status | 1d | 2020-03-31 A | 2020-03-31 A |  | 100% |  | start no earlier than 2020-03-25 |
| 7 |  | Junta de status | 1d | 2020-04-22 A | 2020-04-22 A |  | 100% |  | start no earlier than 2020-04-22 |
| 8 |  | Junta de status | 1d | 2020-05-20 | 2020-05-20 |  |  | 121d | start no earlier than 2020-05-20 |
| 9 |  | Junta de status | 1d | 2020-07-29 | 2020-07-29 |  |  | 71d | start no earlier than 2020-07-29 |
| 10 |  | Junta de status | 1d | 2020-09-07 | 2020-09-07 |  |  | 68d | start no earlier than 2020-08-12 |
| 11 |  | Junta de status | 1d | 2020-09-07 | 2020-09-07 |  |  | 68d | start no earlier than 2020-08-26 |
| 12 |  | Junta de status | 1d | 2020-09-09 | 2020-09-09 |  |  | 66d | start no earlier than 2020-09-09 |
| 13 |  | Junta de status | 1d | 2020-09-23 | 2020-09-23 |  |  | 57d | start no earlier than 2020-09-23 |
| 14 |  | Junta de status | 1d | 2020-10-07 | 2020-10-07 |  |  | 47d | start no earlier than 2020-10-07 |
| 15 |  | Junta de status | 1d | 2020-10-21 | 2020-10-21 |  |  | 37d | start no earlier than 2020-10-21 |
| 16 |  | Junta de status | 1d | 2020-11-04 | 2020-11-04 |  |  | 27d | start no earlier than 2020-11-04 |
| 17 |  | Junta de status | 1d | 2020-11-18 | 2020-11-18 |  |  | 17d | start no earlier than 2020-11-18 |
| 18 |  | Junta de status | 1d | 2020-12-02 | 2020-12-02 |  |  | 7d | start no earlier than 2020-12-02 |
| 19 | 2 | **Comunicación** | 144d? | 2019-10-08 A | 2020-05-07 |  | 98% | 0d |  |
| 20 | 2.1 | **Iniciar proyecto** | 104d? | 2019-10-08 A | 2020-02-28 |  | 100% |  |  |
| 21 | 2.1.1 | **Recopilar información acerca del dominio** | 54d | 2019-10-08 A | 2019-12-20 |  | 100% |  |  |
| 22 |  | Análisis de la situación actual | 20d | 2019-10-08 A | 2019-11-04 A |  | 100% |  |  |
| 23 |  | Identificar el alcance del proyecto | 2d | 2019-11-05 A | 2019-11-06 A |  | 100% |  |  |
| 24 | 2.1.2 | **Documentar Protocolo** | 54d | 2019-10-08 A | 2019-12-20 |  | 100% |  |  |
| 25 |  | Realización de protocolo | 53d | 2019-10-08 A | 2019-12-19 A |  | 100% |  |  |
| 26 |  | Verificación de protocolo | 1d | 2019-12-20 A | 2019-12-20 A | 25 | 100% |  |  |
| 27 |  | Validación de protocolo | 1d | 2019-12-23 A | 2019-12-23 A | 26 | 100% |  |  |
| 28 | 2.1.3 | **Toma de requerimientos** | 3d | 2020-02-13 A | 2020-02-17 A |  | 100% |  |  |
| 29 |  | Primera Reunión con el Cliente | 1d | 2020-02-13 A | 2020-02-13 A |  | 100% |  |  |
| 30 |  | Identificar y capturar los requerimientos | 2d | 2020-02-14 A | 2020-02-17 A | 29 | 100% |  |  |
| 31 | 2.1.4 | **Documentar la solicitud de trabajo(ST)** | 11d | 2020-02-14 | 2020-02-28 |  | 100% |  |  |
| 32 |  | Realización de ST | 2d | 2020-02-18 A | 2020-02-19 A | 30 | 100% |  |  |
| 33 |  | Verificación de ST | 1d | 2020-02-20 A | 2020-02-20 A | 32 | 100% |  |  |
| 34 |  | Validación de ST | 1d | 2020-02-21 A | 2020-02-21 A | 33 | 100% |  |  |
| 35 | 2.2 | **Análisis de Requerimientos** | 47d | 2020-02-20 A | 2020-05-07 |  | 80% | 0d |  |
| 36 | 2.2.1 | **Análisis de Requerimientos** | 2d | 2020-02-20 A | 2020-02-21 A |  | 100% |  |  |
| 37 | 2.2.1.1 | **Estructurar y priorizar los requerimientos** | 2d | 2020-02-20 A | 2020-02-21 A |  | 100% |  |  |
| 38 |  | Identificar requisitos funcionales | 1d | 2020-02-20 A | 2020-02-20 A | 30 | 100% |  |  |
| 39 |  | Identificar requisitos no funcionales | 1d | 2020-02-21 A | 2020-02-21 A | 38 | 100% |  |  |
| 40 | 2.2.2 | **Perfeccionamiento de requerimientos** | 37d | 2020-02-26 A | 2020-04-28 |  | 67% | 0d |  |
| 41 |  | Detallar requerimientos | 2d | 2020-04-27 A | 2020-04-28 | 39 | 50% |  |  |
| 42 |  | Realizar Diagrama Conceptual | 1d | 2020-02-26 A | 2020-02-26 A | 41 | 100% |  |  |
| 43 | 2.2.3 | **Documentar la especificación de Requerimientos** | 4d | 2020-04-27 A | 2020-04-30 A |  | 100% |  |  |
| 44 |  | Realizar SRS | 1d | 2020-04-27 A | 2020-04-27 A | 41 | 100% |  |  |
| 45 |  | Verificar SRS | 1d | 2020-04-30 A | 2020-04-30 A | 44 | 100% |  |  |
| 46 |  | Realizar Registro de Trazabilidad | 1d | 2020-04-29 A | 2020-04-29 A | 44 | 100% |  |  |
| 47 |  | Verificación de requerimientos | 1d | 2020-04-30 A | 2020-04-30 A | 44 | 100% |  | start no earlier than 2020-04-30 |
| 48 |  | Validación de requerimientos | 1d | 2020-05-07 | 2020-05-07 | 56 |  |  |  |
| 49 | 3 | **Planeación** | 47d | 2020-02-14 A | 2020-04-30 |  | 95% | 134d |  |
| 50 | 3.1 | **Elaborar Plan de proyecto** | 8d | 2020-02-14 A | 2020-02-25 A |  | 100% |  |  |
| 51 | 3.1.1 | **Elaboración de plan de proyecto** | 2d | 2020-02-14 A | 2020-02-17 A |  | 100% |  |  |
| 52 |  | Identificar las Tareas específicas a realizar para producir los entregables | 1d | 2020-02-14 A | 2020-02-14 A | 29 | 100% |  |  |
| 53 |  | Incluir las Tareas del proceso de Implementación de Software sobre verificación, validación y revisiones con los Clientes y el Equipo de Trabajo | 1d | 2020-02-14 A | 2020-02-17 A | 52 | 100% |  | finish no earlier than 2020-02-14 |
| 54 |  | Identificar las Tareas para realizar las Instrucciones de entrega. | 1d | 2020-02-17 A | 2020-02-17 A | 53 | 100% |  | finish no earlier than 2020-02-17 |
| 55 |  | Elaboración de Cronograma | 2d | 2020-02-14 A | 2020-02-17 A |  | 100% |  |  |
| 56 |  | Verificación del Plan de Proyecto | 1d | 2020-02-18 A | 2020-02-18 A |  | 100% |  | finish no earlier than 2020-02-18 |
| 57 |  | Validación del Plan de Proyecto | 2d | 2020-02-24 A | 2020-02-25 A | 56 | 100% |  |  |
| 58 | 3.2 | **Establecer la Estrategia de Control de Versiones.** | 1d | 2020-02-14 A | 2020-02-14 |  | 50% |  |  |
| 59 |  | Establecer y preparar el repositorio del proyecto | 1d | 2020-02-14 A | 2020-02-14 |  | 50% | 180d | finish no earlier than 2020-02-14 |
| 60 | 3.3 | **Diseñar Plan de Riesgos y Contingencia** | 45d | 2020-02-18 A | 2020-04-30 |  | 97% | 134d |  |
| 61 |  | Identificar y documentar los riesgos que pueden afectar el proyecto. | 2d | 2020-02-18 A | 2020-02-19 A |  | 100% |  |  |
| 62 |  | Documentar plan de Riesgos, contingencia y mitigación | 3d | 2020-02-20 A | 2020-02-24 A | 61 | 100% |  |  |
| 63 |  | Verificación de plan de Riesgos | 1d | 2020-04-30 A | 2020-04-30 | 62, 3 | 80% | 134d | start no earlier than 2020-04-30 |
| 64 |  | Capacitación | 10d | 2020-02-25 A | 2020-03-09 A | 62 | 100% |  | start no earlier than 2020-02-18 |
| 65 | 5 | **Modelado** | 64d? | 2020-03-10 A | 2020-06-18 | 64 | 39% | 100d |  |
| 66 | 5.1 | **Diseñar comportamiento del sistema** | 30d | 2020-03-10 A | 2020-04-30 | 64 | 31% | 0d |  |
| 67 |  | Elaboración de diagrama de casos de uso | 3d | 2020-03-10 A | 2020-03-12 A | 64 | 100% |  |  |
| 68 |  | Elaboración de diagrama de secuencia | 9d | 2020-04-16 A | 2020-04-30 | 67 | 22% | 0d | finish no earlier than 2020-04-30 |
| 69 |  | Elaboración de diagrama de actividades | 2d | 2020-03-13 | 2020-03-17 | 67 |  | 0d |  |
| 70 |  | Elaboración de diagrama de despliegue | 2d | 2020-03-18 | 2020-03-19 | 69 |  | 0d |  |

| ID | WBS | Task | Duration | Start | Finish | Predecessors | Complete | Total float | Constraint |
| --- | --- | --- | --- | --- | --- | --- | --- | --- | --- |
| 71 | 5.2 | **Diseñar arquitectura** | 29d? | 2020-03-20 A | 2020-05-11 | 66 | 92% | 128d |  |
| 72 | 5.2.1 | **Definir conformación en subsistemas y Componente de Software** | 8d | 2020-03-20 A | 2020-03-31 | 66 | 100% |  |  |
| 73 |  | Elaboración de diagrama de componentes | 2d | 2020-03-20 A | 2020-03-23 A | 66 | 100% |  |  |
| 74 | 5.2.1.2 | **Elaboración de diagrama de base de datos** | 19d | 2020-03-24 A | 2020-04-28 A | 73 | 100% |  |  |
| 75 |  | Diagrama de árbol | 2d | 2020-03-24 A | 2020-03-25 A |  | 100% |  |  |
| 76 |  | Diagrama de documentos | 1d | 2020-04-28 A | 2020-04-28 A | 75 | 100% |  |  |
| 77 |  | Elaboración de diagrama de clases | 2d | 2020-04-29 A | 2020-04-30 A | 68, 74 | 100% |  |  |
| 78 |  | Definir conformación en subsistemas y Componente de Hardware | 6d? | 2020-05-04 A | 2020-05-11 | 77 | 80% | 128d |  |
| 79 | 5.2.3 | **Definir interfaces internas y externas.** | 2d | 2020-04-30 A | 2020-05-04 A | 72 | 100% |  |  |
| 80 |  | Diseño de Prototipos | 2d | 2020-04-30 A | 2020-05-04 A | 72 | 100% |  | finish no earlier than 2020-05-04 |
| 81 |  | Verificar el Diseño de Software | 1d | 2020-05-05 A | 2020-05-05 | 80 | 80% | 0d | finish no earlier than 2020-04-06 |
| 82 |  | Validar del Diseño de Software | 2d | 2020-05-06 | 2020-05-07 | 81 |  | 130d |  |
| 83 | 5.5 | **Definir las Instrucciones de Entrega para los entregables** | 18d | 2020-05-06 A | 2020-05-29 | 81 | 60% | -4d |  |
| 84 |  | Definir las tareas requeridas para realizar las Instrucciones de Entrega | 1d | 2020-05-06 A | 2020-05-06 A | 81 | 100% |  | finish no earlier than 2020-04-27 |
| 85 |  | Definir el contenido y estructura de cada producto | 1d | 2020-05-06 A | 2020-05-06 A | 81 | 100% |  | finish no earlier than 2020-04-28 |
| 86 |  | Definir los medios para entregar cada producto software | 1d | 2020-05-06 A | 2020-05-06 A | 81 | 100% |  | finish no earlier than 2020-04-29 |
| 87 |  | Verificar Formulario de Instrucciones de Entrega | 1d | 2020-05-28 | 2020-05-28 | 86 |  | -4d | start no earlier than 2020-05-28 |
| 88 |  | Validar Formulario de Instrucciones de Entrega | 1d | 2020-05-29 | 2020-05-29 | 87 |  | -4d | finish no earlier than 2020-05-07 |
| 89 | 5.6 | **Diseñar Casos de Prueba y Procedimientos de Prueba** | 15d | 2020-05-26 | 2020-06-15 | 83 |  | 0d |  |
| 90 | 5.6.1 | **Identificar de necesidades de las pruebas unitarias , de integración y de sistema** | 5d | 2020-05-26 | 2020-06-01 | 83 |  | 0d |  |
| 91 |  | Identificación de secciones para P. unitarias | 1d | 2020-05-26 | 2020-05-26 |  |  |  |  |
| 92 |  | Identificación de secciones para P. Integración | 2d | 2020-05-27 | 2020-05-28 | 91 |  |  |  |
| 93 |  | Identificación de secciones para P. Sistema | 2d | 2020-05-29 | 2020-06-01 | 92 |  |  |  |
| 94 | 5.6.2 | **Diseñar los Casos de Prueba** | 10d | 2020-06-01 | 2020-06-12 |  |  | 5d |  |
| 95 |  | Análisis y aplicación de técnicas de diseño de pruebas | 1d | 2020-06-01 | 2020-06-01 |  |  | 102d |  |
| 96 | 5.6.2.2 | **Identificación de casos de prueba** | 6d | 2020-06-02 | 2020-06-09 | 95 |  | 102d |  |
| 97 |  | Identificacion de Casos de Prueba Unitarias | 2d | 2020-06-02 | 2020-06-03 | 91 |  | 102d |  |
| 98 |  | Identificacion de Casos de Prueba Integración | 2d | 2020-06-04 | 2020-06-05 | 97 |  | 102d |  |
| 99 |  | Identificacion de Casos de Prueba Sistema | 2d | 2020-06-08 | 2020-06-09 | 98 |  | 102d |  |
| 100 | 5.6.2.3 | **Establecer los procedimientos de prueba** | 5d | 2020-06-08 | 2020-06-12 |  |  | 0d |  |
| 101 |  | Establecer los procedimientos de p. unitaria | 1d | 2020-06-08 | 2020-06-08 | 97 |  |  |  |
| 102 |  | Establecer los procedimientos de p.Integración | 1d | 2020-06-10 | 2020-06-10 | 98 |  |  |  |
| 103 |  | Establecer los procedimientos de p.Sistema | 1d | 2020-06-12 | 2020-06-12 | 99 |  |  |  |
| 104 |  | Verificar Casos de Prueba y Procedimientos de Prueba | 1d | 2020-06-15 | 2020-06-15 | 100 |  | 100d | finish no earlier than 2020-05-21 |
| 105 | 5.7 | **Actualizar el Repositorio** | 3d | 2020-06-16 | 2020-06-18 | 89 |  | 100d |  |
| 106 |  | Actualizar el Registro de Trazabilidad incorporando los Casos de Prueba y Procedimientos de Prueba. | 1d | 2020-06-16 | 2020-06-16 | 89 |  | 100d | finish no earlier than 2020-04-30 |
| 107 |  | Incorporar el Diseño de Software y el Registro de Trazabilidad a la Configuración de Software como parte de la línea base. | 1d | 2020-06-17 | 2020-06-17 | 106 |  | 100d | finish no earlier than 2020-04-30 |
| 108 |  | Incorporar los Casos de Prueba y Procedimientos de Prueba al Repositorio del Proyecto. | 1d | 2020-06-18 | 2020-06-18 | 107 |  | 100d | finish no earlier than 2020-04-30 |
| 110 |  | Preparación de Reporte Final TT I | 13d | 2020-06-01 | 2020-06-17 |  |  | 101d | finish no earlier than 2020-06-17 |
| 111 |  | Entrega Reporte Final | 1d | 2020-06-23 | 2020-06-23 |  |  | 97d | start no earlier than 2020-06-23 |
| 112 |  | Preparación TT I | 11d | 2020-06-17 | 2020-07-01 |  |  | 90d | finish no earlier than 2020-07-01 |
| 113 |  | Presentación TT 1 | 1d | 2020-07-02 | 2020-07-02 | 112 |  | 90d |  |
| 114 | 10 | **Construcción** | 58d | 2020-07-03 | 2020-10-28 |  |  |  |  |
| 115 | 10.1 | **Codificación** | 53d | 2020-07-03 | 2020-10-21 |  |  | 0d |  |
| 116 | 10.1.1 | **Construir y codificar los componentes o módulos de Software** | 44d | 2020-07-03 | 2020-10-08 |  |  |  |  |
| 117 |  | Construcción de módulo de base de datos | 8d | 2020-07-03 | 2020-07-14 |  |  | 2d | start no earlier than 2020-07-03 |
| 118 |  | Construcción de sistema de visión artificial | 10d | 2020-07-15 | 2020-07-28 | 117 |  | 28d |  |
| 119 |  | Construcción de sistema de reconocimiento | 20d | 2020-07-29 | 2020-09-30 | 118 |  | 28d | start no earlier than 2020-07-01 |
| 120 |  | Codificación de módulo de diagnostico | 5d | 2020-07-15 | 2020-07-21 | 117 |  | 2d |  |
| 121 |  | Construcción de interfaz grafica de usuario | 10d | 2020-07-22 | 2020-09-08 | 120 |  | 2d |  |
| 122 |  | Codificar módulo bluetooth para método de entrada | 3d | 2020-09-09 | 2020-09-11 | 121 |  | 2d |  |
| 123 |  | Codificación de sistema embebido | 8d | 2020-09-14 | 2020-09-24 | 122 |  | 2d |  |
| 124 |  | Codificación de módulo generador de reportes | 5d | 2020-09-25 | 2020-10-01 | 123 |  | 2d |  |
| 125 |  | Codificación de módulo de respaldo y restauración | 5d | 2020-10-02 | 2020-10-08 | 124 |  | 2d |  |
| 126 | 10.1.2 | **Construir los componentes o módulos de Hardware** | 15d | 2020-10-01 | 2020-10-21 |  |  | 28d |  |
| 127 |  | Integración de módulo bluetooth | 4d | 2020-10-01 | 2020-10-06 | 119 |  | 28d |  |
| 128 |  | Integración de sensor angular | 4d | 2020-10-07 | 2020-10-12 | 127 |  | 28d |  |
| 129 |  | Montaje en plicómetro | 7d | 2020-10-13 | 2020-10-21 | 128 |  | 28d |  |
| 130 | 10.2 | **Realizar Pruebas** | 71d | 2020-07-15 | 2020-11-26 |  |  | 0d |  |
| 131 | 10.2.1 | **Aplicar Casos de Pruebas Unitarias** | 38d | 2020-07-15 | 2020-10-12 |  |  | 0d |  |
| 132 | 10.2.1.1 | **Prueba de módulo de base de datos** | 4d | 2020-07-15 | 2020-07-20 |  |  |  |  |
| 133 |  | Codificar las Pruebas | 2d | 2020-07-15 | 2020-07-16 | 117 |  | 36d |  |
| 134 |  | Ejecutar las Pruebas | 2d | 2020-07-17 | 2020-07-20 | 133 |  | 36d |  |
| 135 |  | Analizar y documentar los resultados | 2d | 2020-07-17 | 2020-07-20 | 133 |  | 36d |  |
| 136 | 10.2.1.2 | **Prueba de sistema de visión artificial** | 3d | 2020-07-29 | 2020-07-31 |  |  |  |  |
| 137 |  | Codificar las Pruebas | 2d | 2020-07-29 | 2020-07-30 | 118 |  | 46d |  |
| 138 |  | Ejecutar las Pruebas | 1d | 2020-07-31 | 2020-07-31 | 137 |  | 46d |  |
| 139 |  | Analizar y documentar los resultados | 1d | 2020-07-31 | 2020-07-31 | 137 |  | 46d |  |
| 140 | 10.2.1.3 | **Prueba de sistema de reconocimiento** | 3d | 2020-10-01 | 2020-10-05 |  |  | 40d |  |
| 141 |  | Codificar las Pruebas | 1d | 2020-10-01 | 2020-10-01 | 119 |  | 40d |  |

| ID | WBS | Task | Duration | Start | Finish | Predecessors | Total float | Constraint |
| --- | --- | --- | --- | --- | --- | --- | --- | --- |
| 142 |  | Ejecutar las Pruebas | 1d | 2020-10-02 | 2020-10-02 | 141 | 41d |  |
| 143 |  | Analizar y documentar los resultados | 2d | 2020-10-02 | 2020-10-05 | 141 | 40d |  |
| 144 | 10.2.1.4 | **Prueba de módulo de diagnostico** | 4d | 2020-07-22 | 2020-07-27 |  |  |  |
| 145 |  | Codificar las Pruebas | 2d | 2020-07-22 | 2020-07-23 | 120 | 64d |  |
| 146 |  | Ejecutar las Pruebas | 2d | 2020-07-24 | 2020-07-27 | 145 | 64d |  |
| 147 |  | Analizar y documentar los resultados | 2d | 2020-07-24 | 2020-07-27 | 145 | 64d |  |
| 148 | 10.2.1.5 | **Prueba de interfaz grafica de usuario** | 4d | 2020-09-09 | 2020-09-14 |  | 54d |  |
| 149 |  | Codificar las Pruebas | 2d | 2020-09-09 | 2020-09-10 | 121 | 54d |  |
| 150 |  | Ejecutar las Pruebas | 2d | 2020-09-11 | 2020-09-14 | 149 | 54d |  |
| 151 |  | Analizar y documentar los resultados | 2d | 2020-09-11 | 2020-09-14 | 149 | 54d |  |
| 152 | 10.2.1.6 | **Prueba de módulo bluetooth para método de entrada** | 4d | 2020-09-14 | 2020-09-18 |  | 51d |  |
| 153 |  | Codificar las Pruebas | 2d | 2020-09-14 | 2020-09-15 | 122 | 51d |  |
| 154 |  | Ejecutar las Pruebas | 2d | 2020-09-17 | 2020-09-18 | 153 | 51d |  |
| 155 |  | Analizar y documentar los resultados | 2d | 2020-09-17 | 2020-09-18 | 153 | 51d |  |
| 156 | 10.2.1.7 | **Prueba de sistema embebido** | 2d | 2020-09-25 | 2020-09-28 |  |  |  |
| 157 |  | Codificar las Pruebas | 1d | 2020-09-25 | 2020-09-25 | 123 |  |  |
| 158 |  | Ejecutar las Pruebas | 1d | 2020-09-28 | 2020-09-28 | 157 | 45d |  |
| 159 |  | Analizar y documentar los resultados | 1d | 2020-09-28 | 2020-09-28 | 157 | 45d |  |
| 160 | 10.2.1.8 | **Prueba de módulo generador de reportes** | 2d | 2020-10-02 | 2020-10-05 |  |  |  |
| 161 |  | Codificar las Pruebas | 1d | 2020-10-02 | 2020-10-02 | 124 |  |  |
| 162 |  | Ejecutar las Pruebas | 1d | 2020-10-05 | 2020-10-05 | 161 | 40d |  |
| 163 |  | Analizar y documentar los resultados | 1d | 2020-10-05 | 2020-10-05 | 161 | 40d |  |
| 164 | 10.2.1.9 | **Prueba de módulo de respaldo y restauración** | 2d | 2020-10-09 | 2020-10-12 |  |  |  |
| 165 |  | Codificar las Pruebas | 1d | 2020-10-09 | 2020-10-09 | 125 |  |  |
| 166 |  | Ejecutar las Pruebas | 1d | 2020-10-12 | 2020-10-12 | 165 | 2d |  |
| 167 |  | Analizar y documentar los resultados | 1d | 2020-10-12 | 2020-10-12 | 165 | 2d |  |
| 168 | 10.2.2 | **Realizar pruebas de Integración** | 25d | 2020-10-13 | 2020-11-16 | 164 | 2d |  |
| 169 | 10.2.2.1 | **Prueba de módulo de base de datos** | 4d | 2020-10-13 | 2020-10-16 |  | 2d |  |
| 170 |  | Codificar las Pruebas | 2d | 2020-10-13 | 2020-10-14 | 132 | 2d |  |
| 171 |  | Ejecutar las Pruebas | 2d | 2020-10-15 | 2020-10-16 | 170 | 2d |  |
| 172 |  | Analizar y documentar los resultados | 2d | 2020-10-15 | 2020-10-16 | 170 | 2d |  |
| 173 | 10.2.2.2 | **Prueba de sistema de visión artificial** | 3d | 2020-10-13 | 2020-10-15 |  | 21d |  |
| 174 |  | Codificar las Pruebas | 2d | 2020-10-13 | 2020-10-14 | 136 | 21d |  |
| 175 |  | Ejecutar las Pruebas | 1d | 2020-10-15 | 2020-10-15 | 174 | 21d |  |
| 176 |  | Analizar y documentar los resultados | 1d | 2020-10-15 | 2020-10-15 | 174 | 21d |  |
| 177 | 10.2.2.3 | **Prueba de sistema de reconocimiento** | 3d | 2020-10-16 | 2020-10-20 |  | 21d |  |
| 178 |  | Codificar las Pruebas | 1d | 2020-10-16 | 2020-10-16 | 173 | 21d |  |
| 179 |  | Ejecutar las Pruebas | 1d | 2020-10-19 | 2020-10-19 | 178 | 22d |  |
| 180 |  | Analizar y documentar los resultados | 2d | 2020-10-19 | 2020-10-20 | 178 | 21d |  |
| 181 | 10.2.2.4 | **Prueba de interfaz grafica de usuario** | 4d | 2020-10-19 | 2020-10-22 |  | 2d |  |
| 182 |  | Codificar las Pruebas | 2d | 2020-10-19 | 2020-10-20 | 169 | 2d |  |
| 183 |  | Ejecutar las Pruebas | 2d | 2020-10-21 | 2020-10-22 | 182 | 2d |  |
| 184 |  | Analizar y documentar los resultados | 2d | 2020-10-21 | 2020-10-22 | 182 | 2d |  |
| 185 | 10.2.2.5 | **Prueba de módulo bluetooth para método de entrada** | 4d | 2020-10-23 | 2020-10-28 |  | 2d |  |
| 186 |  | Codificar las Pruebas | 2d | 2020-10-23 | 2020-10-26 | 181 | 2d |  |
| 187 |  | Ejecutar las Pruebas | 2d | 2020-10-27 | 2020-10-28 | 186 | 2d |  |
| 188 |  | Analizar y documentar los resultados | 2d | 2020-10-27 | 2020-10-28 | 186 | 2d |  |
| 189 | 10.2.2.6 | **Prueba de sistema embebido** | 3d | 2020-10-29 | 2020-11-02 |  | 2d |  |
| 190 |  | Codificar las Pruebas | 2d | 2020-10-29 | 2020-10-30 | 185 | 2d |  |
| 191 |  | Ejecutar las Pruebas | 1d | 2020-11-02 | 2020-11-02 | 190 | 2d |  |
| 192 |  | Analizar y documentar los resultados | 1d | 2020-11-02 | 2020-11-02 | 190 | 2d |  |
| 193 | 10.2.2.7 | **Prueba de módulo de diagnostico** | 4d | 2020-11-03 | 2020-11-06 |  | 2d |  |
| 194 |  | Codificar las Pruebas | 2d | 2020-11-03 | 2020-11-04 | 189 | 2d |  |
| 195 |  | Ejecutar las Pruebas | 2d | 2020-11-05 | 2020-11-06 | 194 | 2d |  |
| 196 |  | Analizar y documentar los resultados | 2d | 2020-11-05 | 2020-11-06 | 194 | 2d |  |
| 197 | 10.2.2.8 | **Prueba de módulo generador de reportes** | 4d | 2020-11-09 | 2020-11-12 |  | 2d |  |
| 198 |  | Codificar las Pruebas | 2d | 2020-11-09 | 2020-11-10 | 193 | 2d |  |
| 199 |  | Ejecutar las Pruebas | 2d | 2020-11-11 | 2020-11-12 | 198 | 2d |  |
| 200 |  | Analizar y documentar los resultados | 2d | 2020-11-11 | 2020-11-12 | 198 | 2d |  |
| 201 | 10.2.2.9 | **Prueba de módulo de respaldo y restauración** | 2d | 2020-11-13 | 2020-11-16 |  | 2d |  |
| 202 |  | Codificar las Pruebas | 1d | 2020-11-13 | 2020-11-13 | 197 | 2d |  |
| 203 |  | Ejecutar las Pruebas | 1d | 2020-11-16 | 2020-11-16 | 202 | 2d |  |
| 204 |  | Analizar y documentar los resultados | 1d | 2020-11-16 | 2020-11-16 | 202 | 2d |  |
| 205 | 10.2.3 | **Realizar pruebas de Sistema** | 6d | 2020-11-17 | 2020-11-24 | 168 | 2d |  |
| 206 |  | Establecer el ambiente de prueba. | 3d | 2020-11-17 | 2020-11-19 | 201 | 2d | start no earlier than 2020-09-30 |
| 207 |  | Ejecución de las iteraciones de pruebas | 3d | 2020-11-20 | 2020-11-24 | 206 | 4d | start no earlier than 2020-10-05 |
| 208 |  | Analizar y documentar los resultados | 3d | 2020-11-20 | 2020-11-24 | 206 | 2d | start no earlier than 2020-10-08 |
| 209 | 10.2.4 | **Cierre del procedimiento de pruebas** | 2d | 2020-11-25 | 2020-11-26 | 208 | 2d |  |
| 210 |  | Documentar los resultados en el Reporte de Pruebas. | 2d | 2020-11-25 | 2020-11-26 | 208 | 2d | start no earlier than 2020-10-07 |
| 211 | 11 | **Despliegue** | 9d? | 2020-11-27 | 2020-12-09 | 114 | 2d |  |

| ID | WBS | Task | Duration | Start | Finish | Predecessors | Total float | Constraint |
| --- | --- | --- | --- | --- | --- | --- | --- | --- |
| 212 | 11.1 | **Cierre de proyecto** | 9d? | 2020-11-27 | 2020-12-09 | 130 | 2d |  |
| 213 | 11.1.1 | **Documentar el Manual de Mantenimiento** | 3d? | 2020-11-27 | 2020-12-01 |  | 2d |  |
| 214 |  | Realizar Manual de Mantenimiento. | 1d? | 2020-11-27 | 2020-11-27 | 114 | 2d |  |
| 215 |  | Verificar Manual de Mantenimiento. | 1d | 2020-11-30 | 2020-11-30 | 214 | 2d |  |
| 216 |  | Aprobar Manual de Mantenimiento. | 1d | 2020-12-01 | 2020-12-01 | 215 | 2d |  |
| 217 |  | Incorporar el Manual de Mantenimiento a la línea base de la Configuración del Software | 1d | 2020-11-27 | 2020-11-27 | 209 | 10d |  |
| 218 | 11.1.3 | **Entrega de Producto** | 2d | 2020-12-02 | 2020-12-03 |  | 2d |  |
| 219 |  | Comprender la Configuración de Software. | 2d | 2020-12-02 | 2020-12-03 | 213 | 2d |  |
| 220 | 11.1.4 | **Formalizar la conclusión del proyecto** | 3d | 2020-12-04 | 2020-12-08 |  | 2d |  |
| 221 |  | Obtener la copia aprobada del Formulario de Instrucciones de Entrega | 1d | 2020-12-04 | 2020-12-04 | 219 | 2d | finish no earlier than 2020-10-21 |
| 222 |  | Realizar entrega | 1d | 2020-12-07 | 2020-12-07 | 221 | 2d | finish no earlier than 2020-10-22 |
| 223 |  | Firma de Acta de Aceptación | 1d | 2020-12-08 | 2020-12-08 | 222 | 2d | finish no earlier than 2020-10-23 |
| 224 |  | Actualizar el Repositorio del Proyecto. | 1d | 2020-12-09 | 2020-12-09 | 220 | 2d | start no earlier than 2020-10-26 |
| 225 |  | Preparación de Reporte Final TT II | 13d | 2019-11-19 | 2019-12-05 |  | 231d |  |
| 226 |  | Entrega Reporte Final TT II | 1d | 2020-11-19 | 2020-11-19 |  | 4d | finish no earlier than 2020-11-19 |
| 227 |  | Preparación Presentación TT II | 11d | 2020-11-20 | 2020-12-04 | 226 |  |  |
| 228 |  | Presentación TT II | 1d | 2020-12-07 | 2020-12-07 | 227 | 4d |  |

## Version 2 (saved 2021-06-02, file TT-Cronograma v06 (ACTUAL).mpp)

Last finish 2020-12-30 → 2021-06-18 (+170d). Complete tasks 41 → 59.

Added:

| ID | Task | Duration | Start | Finish |
| --- | --- | --- | --- | --- |
| 79 | Diseño de sistema embebido | 1d? | 2020-03-20 | 2020-03-20 |
| 80 | <Tarea nueva> | 1d? | 2020-03-20 | 2020-03-20 |
| 83 | Diseño de Prototipo v02 | 2d | 2020-09-16 A | 2020-09-17 A |

Changed:

| ID | Task | Start | Finish | Duration | Complete | Total float | Other |
| --- | --- | --- | --- | --- | --- | --- | --- |
| 1 | **Junta de status** |  |  | 184d → 185d |  |  |  |
| 19 | **Comunicación** |  | 2020-05-07 A |  | 98% → 100% | 0d → none |  |
| 35 | **Análisis de Requerimientos** |  | 2020-05-07 A |  | 80% → 100% | 0d → none |  |
| 40 | **Perfeccionamiento de requerimientos** |  | 2020-04-28 → 2020-04-27 A (-1d) | 37d → 36d | 67% → 100% | 0d → none |  |
| 41 | Detallar requerimientos |  | 2020-04-28 → 2020-04-27 A (-1d) | 2d → 1d | 50% → 100% |  |  |
| 48 | Validación de requerimientos | 2020-05-07 A | 2020-05-07 A |  | 0% → 100% |  |  |
| 49 | **Planeación** |  | 2020-04-30 A |  | 95% → 100% | 134d → none |  |
| 58 | **Establecer la Estrategia de Control de Versiones.** |  | 2020-02-14 A |  | 50% → 100% |  |  |
| 59 | Establecer y preparar el repositorio del proyecto |  | 2020-02-14 A |  | 50% → 100% | 180d → none |  |
| 60 | **Diseñar Plan de Riesgos y Contingencia** |  | 2020-04-30 A |  | 97% → 100% | 134d → none |  |
| 63 | Verificación de plan de Riesgos |  | 2020-04-30 A |  | 80% → 100% | 134d → none |  |
| 65 | **Modelado** |  | 2020-06-18 → 2020-09-17 (+91d) | 64d? → 103d? | 39% → 65% | 100d → 177d |  |
| 66 | **Diseñar comportamiento del sistema** |  | 2020-04-30 → 2020-05-11 (+11d) | 30d → 36d | 31% → 40% |  |  |
| 68 | Elaboración de diagrama de secuencia |  | 2020-04-30 → 2020-04-28 A (-2d) | 9d → 7d | 22% → 100% | 0d → none | constraint finish no earlier than 2020-04-30 → finish no earlier than 2020-04-28 |
| 69 | Elaboración de diagrama de actividades | 2020-03-13 A | 2020-03-17 A |  | 0% → 100% | 0d → none |  |
| 70 | Elaboración de diagrama de despliegue | 2020-03-18 A | 2020-03-19 → 2020-05-11 (+53d) | 2d → 31d | 0% → 16% |  | constraint none → finish no earlier than 2020-05-11 |
| 71 | **Diseñar arquitectura** |  | 2020-05-11 → 2020-09-17 (+129d) | 29d? → 96d? | 92% → 97% | 128d → 177d |  |
| 72 | **Definir conformación en subsistemas y Componente de Software** |  | 2020-03-31 → 2020-08-02 A (+124d) | 8d → 88d |  |  |  |
| 73 | Elaboración de diagrama de componentes |  |  |  |  |  | constraint none → finish no earlier than 2020-03-24 |
| 74 | **Elaboración de diagrama de base de datos** |  | 2020-04-28 A → 2020-08-02 A (+96d) | 19d → 86d |  |  |  |
| 76 | Diagrama de documentos |  | 2020-04-28 A → 2020-08-02 A (+96d) | 1d → 60d |  |  | constraint none → finish no earlier than 2020-08-02 |
| 78 | **Definir conformación en subsistemas y Componente de Hardware** | 2020-05-04 A → 2020-05-11 (+7d) |  | 6d? → 0d? | 80% → 0% | 128d → 244d |  |
| 81 | **Definir interfaces internas y externas.** |  | 2020-05-04 A → 2020-09-17 A (+136d) | 2d → 74d |  |  |  |
| 82 | Diseño de Prototipos v01 |  |  |  |  |  | was named Diseño de Prototipos |
| 86 | **Definir las Instrucciones de Entrega para los entregables** |  | 2020-05-29 A |  | 60% → 100% | -4d → none |  |
| 90 | Verificar Formulario de Instrucciones de Entrega | 2020-05-28 A | 2020-05-28 A |  | 0% → 100% | -4d → none |  |
| 91 | Validar Formulario de Instrucciones de Entrega | 2020-05-29 A | 2020-05-29 A |  | 0% → 100% | -4d → none |  |
| 113 | Preparación de Reporte Final TT I | 2020-06-01 A | 2020-06-17 A |  | 0% → 100% | 101d → none |  |
| 114 | Entrega Reporte Final | 2020-06-23 A | 2020-06-23 A |  | 0% → 100% | 97d → none |  |
| 115 | Preparación TT I | 2020-06-17 A | 2020-07-01 A |  | 0% → 100% | 90d → none |  |
| 116 | Presentación TT I | 2020-07-02 A | 2020-07-02 A |  | 0% → 100% | 90d → none | was named Presentación TT 1 |
| 117 | **Construcción** | 2020-07-03 A |  |  | 0% → 13% |  |  |
| 118 | **Codificación** | 2020-07-03 A | 2020-10-21 → 2021-06-11 (+233d) | 53d → 201d | 0% → 18% |  |  |
| 119 | **Construir y codificar los componentes o módulos de Software** | 2020-07-03 A |  |  | 0% → 13% |  |  |
| 120 | Construcción de módulo de base de datos | 2020-07-03 A |  |  | 0% → 50% | 2d → 8d |  |
| 121 | Construcción de sistema de visión artificial | 2020-07-15 A | 2020-07-28 A |  | 0% → 100% | 28d → none |  |
| 124 | Construcción de interfaz grafica de usuario | 2020-07-22 A |  |  | 0% → 80% | 2d → 167d |  |
| 126 | Codificación de sistema embebido | 2020-09-14 A | 2020-09-24 A |  | 0% → 100% | 2d → none |  |
| 128 | Codificación de módulo de respaldo y restauración | 2020-10-02 A | 2020-10-08 → 2021-06-11 (+246d) | 5d → 162d |  | 2d → 0d | constraint none → finish no earlier than 2021-06-11 |
| 129 | **Construir los componentes o módulos de Hardware** | 2020-10-01 A | 2020-10-21 A |  | 0% → 100% | 28d → none |  |
| 130 | Integración de módulo bluetooth | 2020-10-01 A | 2020-10-06 A |  | 0% → 100% | 28d → none |  |
| 131 | Integración de sensor angular | 2020-10-07 A | 2020-10-12 A |  | 0% → 100% | 28d → none |  |
| 132 | Montaje en plicómetro | 2020-10-13 A | 2020-10-21 A |  | 0% → 100% | 28d → none |  |
| 228 | Preparación de Reporte Final TT II | 2019-11-19 → 2021-06-02 (+561d) | 2019-12-05 → 2021-06-18 (+561d) |  |  | 231d → 0d | constraint none → start no earlier than 2021-06-02 |

## Version 3 (saved 2021-06-02, file TT-Cronograma v06 (ACTUAL).mpp)

Note of the change: TT I Respaldo

Last finish 2021-06-18 → 2021-07-07 (+19d). Complete tasks 59 → 61.

Changed:

| ID | Task | Start | Finish | Duration | Complete | Total float | Predecessors | Other |
| --- | --- | --- | --- | --- | --- | --- | --- | --- |
| 65 | **Modelado** |  |  |  | 65% → 85% | 177d → 190d |  |  |
| 66 | **Diseñar comportamiento del sistema** |  | 2020-05-11 → 2020-04-28 A (-13d) | 36d → 28d | 40% → 100% | 0d → none |  |  |
| 69 | Elaboración de diagrama de actividades |  | 2020-03-17 A → 2020-04-17 A (+31d) | 2d → 18d |  |  |  | constraint none → finish no earlier than 2020-04-17 |
| 70 | Elaboración de diagrama de despliegue |  | 2020-05-11 → 2020-04-28 A (-13d) | 31d → 12d | 16% → 100% | 0d → none |  | constraint finish no earlier than 2020-05-11 → finish no earlier than 2020-04-28 |
| 71 | **Diseñar arquitectura** |  |  |  | 97% → 99% | 177d → 190d |  |  |
| 78 | **Definir conformación en subsistemas y Componente de Hardware** | 2020-05-11 → 2020-04-30 (-11d) | 2020-05-11 → 2020-04-30 (-11d) |  |  | 244d → 263d |  |  |
| 84 | Verificar el Diseño de Software |  | 2020-05-05 → 2020-05-26 A (+21d) | 1d → 0d | 80% → 100% | 246d → none |  | constraint finish no earlier than 2020-04-06 → finish no earlier than 2020-05-26 |
| 85 | Validar del Diseño de Software | 2020-05-06 → 2020-05-27 (+21d) | 2020-05-07 → 2020-05-28 (+21d) |  |  | 246d → 244d |  |  |
| 86 | **Definir las Instrucciones de Entrega para los entregables** |  | 2020-05-29 A → 2020-06-03 A (+5d) | 18d → 21d |  |  |  |  |
| 90 | Verificar Formulario de Instrucciones de Entrega | 2020-05-28 A → 2020-06-03 A (+6d) | 2020-05-28 A → 2020-06-03 A (+6d) |  |  |  |  | constraint start no earlier than 2020-05-28 → finish no earlier than 2020-06-03 |
| 97 | **Diseñar los Casos de Prueba** | 2020-06-01 → 2020-06-04 (+3d) |  | 10d → 7d |  | 5d → 2d |  |  |
| 98 | Análisis y aplicación de técnicas de diseño de pruebas | 2020-06-01 → 2020-06-04 (+3d) | 2020-06-01 → 2020-06-04 (+3d) |  |  | 218d → 228d |  |  |
| 99 | **Identificación de casos de prueba** | 2020-06-02 → 2020-06-05 (+3d) | 2020-06-09 → 2020-06-12 (+3d) |  |  | 218d → 228d |  |  |
| 100 | Identificacion de Casos de Prueba Unitarias | 2020-06-02 → 2020-06-05 (+3d) | 2020-06-03 → 2020-06-08 (+5d) |  |  | 218d → 228d |  |  |
| 101 | Identificacion de Casos de Prueba Integración | 2020-06-04 → 2020-06-09 (+5d) | 2020-06-05 → 2020-06-10 (+5d) |  |  | 218d → 228d |  |  |
| 102 | Identificacion de Casos de Prueba Sistema | 2020-06-08 → 2020-06-11 (+3d) | 2020-06-09 → 2020-06-12 (+3d) |  |  | 218d → 228d |  |  |
| 228 | Preparación de Reporte Final TT II |  | 2021-06-18 → 2021-06-25 (+7d) | 13d → 18d |  | 0d → 8d |  | constraint start no earlier than 2021-06-02 → finish no earlier than 2021-06-25 |
| 229 | Entrega Reporte Final TT II | 2020-11-19 → 2021-07-01 (+224d) | 2020-11-19 → 2021-07-01 (+224d) | 1d → 0d |  | 120d → 0d |  | constraint finish no earlier than 2020-11-19 → start no earlier than 2021-07-01 |
| 230 | Preparación Presentación TT II | 2020-11-20 → 2021-07-01 (+223d) | 2020-12-04 → 2021-07-07 (+215d) | 11d → 5d |  | 120d → 0d |  | constraint none → finish no earlier than 2021-07-04 |
| 231 | Presentación TT II | 2020-12-07 → 2021-07-05 (+210d) | 2020-12-07 → 2021-07-05 (+210d) |  |  | 120d → 2d | 230 → none | constraint none → start no earlier than 2021-07-05 |
